# Maison d'éducation

How a schedule from ProjectLibre changed from version to version. A marks actual dates.

## Version 1 (saved 2021-02-18, file Maison_deducation_opti_c3.pod)

Note of the change: suite tp4

| ID | WBS | Task | Duration | Start | Finish | Predecessors | Complete | Constraint |
| --- | --- | --- | --- | --- | --- | --- | --- | --- |
| 1 | 1 | **Maison d'éducation** | 58.94d | 2021-01-28 | 2021-04-20 |  | 24% |  |
| 2 |  | Etude préalable | 2.5d | 2021-01-28 | 2021-02-01 |  | 100% |  |
| 3 | 1.2 | **Sous-projet "placement"** | 33.12d | 2021-02-01 | 2021-03-18 |  | 48% |  |
| 4 |  | EP | 2.5d | 2021-02-01 | 2021-02-03 | 2 | 100% |  |
| 5 |  | Conception ED "enfant" (ED) | 10d | 2021-02-04 | 2021-02-17 | 4 | 100% |  |
| 6 |  | 1-Fichier "enfant" (prog) | 1d | 2021-02-18 | 2021-02-18 | 5 | 100% | start no earlier than 2021-02-18 |
| 7 |  | 2-Fichier "enfant" (prog) | 2.5d | 2021-02-26 | 2021-03-02 | 6 |  | start no earlier than 2021-02-26 |
| 8 |  | Affectation enfants-familles (prog) | 6.25d | 2021-03-02 | 2021-03-10 | 7 |  | start no earlier than 2021-02-23 |
| 9 |  | MAJ BD (départ enfants) (prog) | 3.75d | 2021-03-11 | 2021-03-16 | 7 |  | start no earlier than 2021-03-11 |
| 10 |  | Test placement | 1.88d | 2021-03-16 | 2021-03-18 | 7, 8, 9 |  |  |
| 11 | 1.3 | **Sous-projet "suivi"** | 41.94d | 2021-02-01 | 2021-03-31 |  | 42% |  |
| 12 |  | Gestion d'historique "enfant" (ED et prog) | 3.44d | 2021-03-26 | 2021-03-31 | 2 |  | start no earlier than 2021-03-26 |
| 13 |  | Planning des visites (ED et prog) | 2.5d | 2021-02-01 | 2021-02-03 | 2 | 100% | start no earlier than 2021-02-01 |
| 14 | 1.4 | **Sous-projet "familles d'accueil"** | 41.38d | 2021-02-04 | 2021-04-02 |  | 13% |  |
| 15 |  | EP | 2.5d | 2021-02-04 | 2021-02-08 | 2 | 100% | start no earlier than 2021-02-04 |
| 16 |  | 1-Conception BD "famille" (ED) | 1d | 2021-02-18 | 2021-02-18 | 15 | 100% | start no earlier than 2021-02-18 |
| 17 |  | 2-Conception BD "famille" (ED) | 11.25d | 2021-02-26 | 2021-03-15 | 16 |  | start no earlier than 2021-02-26 |
| 18 |  | Fichier "famille" (prog) | 6d | 2021-03-15 | 2021-03-23 | 17 |  | start no earlier than 2021-03-02 |
| 19 |  | MAJ BD recrutement, renouvellement (prog) | 5d | 2021-03-25 | 2021-03-31 | 17 |  | start no earlier than 2021-03-25 |
| 20 |  | Test famille | 1.88d | 2021-04-01 | 2021-04-02 | 18, 19 |  | start no earlier than 2021-03-19 |
| 21 | 1.5 | **Sous-projet "allocation"** | 20.25d | 2021-03-17 | 2021-04-14 |  |  | start no earlier than 2021-03-04 |
| 22 |  | Conception BD compta (ED) | 6.25d | 2021-03-17 | 2021-03-25 | 2 |  | start no earlier than 2021-03-17 |
| 23 |  | Procédure de versement (prog) | 3.75d | 2021-04-01 | 2021-04-06 | 22 |  | start no earlier than 2021-04-01 |
| 24 |  | Procédures arrêt (prog) | 3.12d | 2021-04-07 | 2021-04-12 | 22 |  | start no earlier than 2021-04-07 |
| 25 |  | Test allocations | 1.88d | 2021-04-12 | 2021-04-14 | 23, 24 |  | start no earlier than 2021-03-23 |
| 26 |  | Intégration | 4.69d | 2021-04-14 | 2021-04-20 | 10, 12, 13, 20, 25 |  | start no earlier than 2021-04-01 |

## Version 2 (saved 2021-02-18, file Maison_deducation_opti_c6.pod)

Note of the change: suite tp4

Last finish 2021-04-20 → 2021-04-01 (-19d).

Changed:

| ID | Task | Start | Finish | Duration | Other |
| --- | --- | --- | --- | --- | --- |
| 1 | **Maison d'éducation** |  | 2021-04-20 → 2021-04-01 (-19d) | 58.94d → 45.12d |  |
| 3 | **Sous-projet "placement"** |  | 2021-03-18 → 2021-03-12 (-6d) | 33.12d → 29.12d |  |
| 8 | Affectation enfants-familles (prog) |  |  |  | resources Analyste programmeur [80%] → Analtyste programmeur 2 [80%] |
| 9 | MAJ BD (départ enfants) (prog) | 2021-03-11 → 2021-03-02 (-9d) | 2021-03-16 → 2021-03-08 (-8d) |  | constraint start no earlier than 2021-03-11 → start no earlier than 2021-03-02 |
| 10 | Test placement | 2021-03-16 → 2021-03-10 (-6d) | 2021-03-18 → 2021-03-12 (-6d) |  | constraint none → start no earlier than 2021-03-08 |
| 11 | **Sous-projet "suivi"** |  | 2021-03-31 → 2021-03-26 (-5d) | 41.94d → 38.88d |  |
| 12 | Gestion d'historique "enfant" (ED et prog) | 2021-03-26 → 2021-03-17 (-9d) | 2021-03-31 → 2021-03-26 (-5d) | 3.44d → 6.88d | constraint start no earlier than 2021-03-26 → start no earlier than 2021-03-17; resources Analyste programmeur [80%]; Spécialiste système [80%] → Spécialiste système [80%] |
| 14 | **Sous-projet "familles d'accueil"** |  | 2021-04-02 → 2021-03-22 (-11d) | 41.38d → 32.38d |  |
| 17 | 2-Conception BD "famille" (ED) |  | 2021-03-15 → 2021-03-04 (-11d) | 11.25d → 5d | resources Spécialiste système [80%] → Spécialiste système [80%]; Chef de projet |
| 18 | Fichier "famille" (prog) | 2021-03-15 → 2021-03-05 (-10d) | 2021-03-23 → 2021-03-12 (-11d) |  | constraint start no earlier than 2021-03-02 → start no earlier than 2021-03-05 |
| 19 | MAJ BD recrutement, renouvellement (prog) | 2021-03-25 → 2021-03-06 (-19d) | 2021-03-31 → 2021-03-16 (-15d) | 5d → 6.25d | constraint start no earlier than 2021-03-25 → start no earlier than 2021-03-06; resources Chef de projet → Analyste programmeur [80%] |
| 20 | Test famille | 2021-04-01 → 2021-03-19 (-13d) | 2021-04-02 → 2021-03-22 (-11d) |  |  |
| 21 | **Sous-projet "allocation"** | 2021-03-17 → 2021-03-08 (-9d) | 2021-04-14 → 2021-03-25 (-20d) | 20.25d → 13.75d | constraint start no earlier than 2021-03-04 → start no earlier than 2021-03-06 |
| 22 | Conception BD compta (ED) | 2021-03-17 → 2021-03-08 (-9d) | 2021-03-25 → 2021-03-16 (-9d) |  | constraint start no earlier than 2021-03-17 → start no earlier than 2021-03-05 |
| 23 | Procédure de versement (prog) | 2021-04-01 → 2021-03-17 (-15d) | 2021-04-06 → 2021-03-22 (-15d) |  | constraint start no earlier than 2021-04-01 → start no earlier than 2021-03-17; resources Analyste programmeur [80%] → Analtyste programmeur 2 [80%] |
| 24 | Procédures arrêt (prog) | 2021-04-07 → 2021-03-18 (-20d) | 2021-04-12 → 2021-03-23 (-20d) |  | constraint start no earlier than 2021-04-07 → start no earlier than 2021-03-18 |
| 25 | Test allocations | 2021-04-12 → 2021-03-23 (-20d) | 2021-04-14 → 2021-03-25 (-20d) |  |  |
| 26 | Intégration | 2021-04-14 → 2021-03-26 (-19d) | 2021-04-20 → 2021-04-01 (-19d) | 4.69d → 3.75d | constraint start no earlier than 2021-04-01 → start no earlier than 2021-03-26; resources Analyste programmeur [80%]; Chef de projet; Spécialiste système [80%]; Utilisateur averti [80%] → Analyste programmeur [80%]; Chef de projet; Spécialiste système [80%]; Utilisateur averti [80%]; Analtyste programmeur 2 [80%] |

## Version 3 (saved 2021-02-18, file Maison_deducation_opti_c1.pod)

Note of the change: suite tp4

Last finish 2021-04-01 → 2021-03-31 (-1d). Complete tasks 7 → 0.

Added:

| ID | Task | Duration | Start | Finish | Predecessors | Constraint | Resources |
| --- | --- | --- | --- | --- | --- | --- | --- |
| 15 | Conception BD "famille" (ED) | 10d | 2021-02-18 | 2021-03-03 | 14 | start no earlier than 2021-02-18 | Spécialiste système |

Removed: 7 2-Fichier "enfant" (prog); 16 1-Conception BD "famille" (ED); 17 2-Conception BD "famille" (ED)

Changed:

| ID | Task | Start | Finish | Duration | Complete | Predecessors | Other |
| --- | --- | --- | --- | --- | --- | --- | --- |
| 1 | **Maison d'éducation** |  | 2021-04-01 → 2021-03-31 (-1d) | 45.12d → 44.12d | 24% → 0% |  | baseline start 2021-01-28 → none; baseline finish 2021-03-31 → none |
| 2 | Etude préalable |  |  |  | 100% → 0% |  | baseline start 2021-01-28 → none; baseline finish 2021-02-01 → none |
| 3 | **Sous-projet "placement"** |  | 2021-03-12 → 2021-03-08 (-4d) | 29.12d → 25d | 48% → 0% |  | baseline start 2021-02-01 → none; baseline finish 2021-03-08 → none |
| 4 | EP |  |  |  | 100% → 0% |  | baseline start 2021-02-01 → none; baseline finish 2021-02-03 → none |
| 5 | Conception ED "enfant" (ED) |  |  |  | 100% → 0% |  | baseline start 2021-02-04 → none; baseline finish 2021-02-17 → none |
| 6 | Fichier "enfant" (prog) |  | 2021-02-18 → 2021-02-22 (+4d) | 1d → 3d | 100% → 0% |  | was named 1-Fichier "enfant" (prog); baseline start 1970-01-01 → none; baseline finish 1970-01-01 → none |
| 7 | Affectation enfants-familles (prog) | 2021-03-02 → 2021-02-23 (-7d) | 2021-03-10 → 2021-03-01 (-9d) | 6.25d → 5d |  | 2-Fichier "enfant" (prog) → 5 | resources Analtyste programmeur 2 [80%] → Analyste programmeur; baseline start 2021-02-23 → none; baseline finish 2021-03-01 → none |
| 8 | MAJ BD (départ enfants) (prog) |  | 2021-03-08 → 2021-03-04 (-4d) | 3.75d → 3d |  | 2-Fichier "enfant" (prog) → 5 | resources Analyste programmeur [80%] → Analyste programmeur; baseline start 2021-03-02 → none; baseline finish 2021-03-04 → none |
| 9 | Test placement | 2021-03-10 → 2021-03-05 (-5d) | 2021-03-12 → 2021-03-08 (-4d) | 1.88d → 1.5d |  | 2-Fichier "enfant" (prog), 7, 8 → 6, 7, 8 | constraint start no earlier than 2021-03-08 → none; resources Utilisateur averti [80%] → Utilisateur averti; baseline start 2021-03-05 → none; baseline finish 2021-03-08 → none |
| 10 | **Sous-projet "suivi"** |  | 2021-03-26 → 2021-03-15 (-11d) | 38.88d → 30.25d | 42% → 0% |  | baseline start 2021-02-01 → none; baseline finish 2021-03-15 → none |
| 11 | Gestion d'historique "enfant" (ED et prog) | 2021-03-17 → 2021-03-11 (-6d) | 2021-03-26 → 2021-03-15 (-11d) | 6.88d → 2.75d |  |  | constraint start no earlier than 2021-03-17 → start no earlier than 2021-03-11; resources Spécialiste système [80%] → Spécialiste système; Analyste programmeur; baseline start 2021-03-11 → none; baseline finish 2021-03-15 → none |
| 12 | Planning des visites (ED et prog) |  |  |  | 100% → 0% |  | resources Analyste programmeur; Spécialiste système → Spécialiste système; Analyste programmeur; baseline start 2021-02-01 → none; baseline finish 2021-02-03 → none |
| 13 | **Sous-projet "familles d'accueil"** |  |  | 32.38d → 32d | 13% → 0% |  | baseline start 2021-02-04 → none; baseline finish 2021-03-22 → none |
| 14 | EP |  |  |  | 100% → 0% |  | baseline start 2021-02-04 → none; baseline finish 2021-02-08 → none |
| 16 | Fichier "famille" (prog) | 2021-03-05 → 2021-03-04 (-1d) | 2021-03-12 → 2021-03-11 (-1d) |  |  | 2-Conception BD "famille" (ED) → 15 | constraint start no earlier than 2021-03-05 → start no earlier than 2021-03-02; baseline start 2021-03-04 → none; baseline finish 2021-03-11 → none |
| 17 | MAJ BD recrutement, renouvellement (prog) | 2021-03-06 → 2021-03-12 (+6d) | 2021-03-16 → 2021-03-18 (+2d) | 6.25d → 5d |  | 2-Conception BD "famille" (ED) → 15 | constraint start no earlier than 2021-03-06 → start no earlier than 2021-03-12; resources Analyste programmeur [80%] → Chef de projet; baseline start 2021-03-12 → none; baseline finish 2021-03-18 → none |
| 18 | Test famille |  |  | 1.88d → 1.5d |  |  | resources Utilisateur averti [80%] → Utilisateur averti; baseline start 2021-03-19 → none; baseline finish 2021-03-22 → none |
| 19 | **Sous-projet "allocation"** | 2021-03-08 → 2021-03-04 (-4d) |  | 13.75d → 15.38d |  |  | constraint start no earlier than 2021-03-06 → start no earlier than 2021-02-08; baseline start 2021-03-04 → none; baseline finish 2021-03-25 → none |
| 20 | Conception BD compta (ED) | 2021-03-08 → 2021-03-04 (-4d) | 2021-03-16 → 2021-03-10 (-6d) | 6.25d → 5d |  |  | constraint start no earlier than 2021-03-05 → start no earlier than 2021-03-04; resources Spécialiste système [80%] → Spécialiste système; baseline start 2021-03-04 → none; baseline finish 2021-03-10 → none |
| 21 | Procédure de versement (prog) | 2021-03-17 → 2021-03-16 (-1d) | 2021-03-22 → 2021-03-18 (-4d) | 3.75d → 3d |  |  | constraint start no earlier than 2021-03-17 → start no earlier than 2021-03-16; resources Analtyste programmeur 2 [80%] → Analyste programmeur; baseline start 2021-03-16 → none; baseline finish 2021-03-18 → none |
| 22 | Procédures arrêt (prog) | 2021-03-18 → 2021-03-19 (+1d) |  | 3.12d → 2.5d |  |  | constraint start no earlier than 2021-03-18 → start no earlier than 2021-03-19; resources Analyste programmeur [80%] → Analyste programmeur; baseline start 2021-03-19 → none; baseline finish 2021-03-23 → none |
| 23 | Test allocations |  |  | 1.88d → 1.5d |  |  | resources Utilisateur averti [80%] → Utilisateur averti; baseline start 2021-03-23 → none; baseline finish 2021-03-25 → none |
| 24 | Intégration | 2021-03-26 → 2021-03-25 (-1d) | 2021-04-01 → 2021-03-31 (-1d) |  |  |  | constraint start no earlier than 2021-03-26 → start no earlier than 2021-03-25; resources Analyste programmeur [80%]; Chef de projet; Spécialiste système [80%]; Utilisateur averti [80%]; Analtyste programmeur 2 [80%] → Chef de projet; Utilisateur averti; Analyste programmeur; Spécialiste système; baseline start 2021-03-25 → none; baseline finish 2021-03-31 → none |

## Version 4 (saved 2021-02-18, file Maison_deducation_opti_c7.pod)

Note of the change: suite tp4

Last finish 2021-03-31 → 2021-04-01 (+1d). Complete tasks 0 → 7.

Added:

| ID | Task | Duration | Start | Finish | Predecessors | Constraint | Resources |
| --- | --- | --- | --- | --- | --- | --- | --- |
| 7 | 2-Fichier "enfant" (prog) | 2.5d | 2021-02-26 | 2021-03-02 | 6 | start no earlier than 2021-02-26 | Analyste programmeur [80%] |
| 16 | 1-Conception BD "famille" (ED) | 1d | 2021-02-18 | 2021-02-18 | 15 | start no earlier than 2021-02-18 | Spécialiste système |
| 17 | 2-Conception BD "famille" (ED) | 5d | 2021-02-26 | 2021-03-04 | 16 | start no earlier than 2021-02-26 | Spécialiste système [80%]; Chef de projet |

Removed: 15 Conception BD "famille" (ED)

Changed:

| ID | Task | Start | Finish | Duration | Complete | Predecessors | Other |
| --- | --- | --- | --- | --- | --- | --- | --- |
| 1 | **Maison d'éducation** |  | 2021-03-31 → 2021-04-01 (+1d) | 44.12d → 45.12d | 0% → 24% |  | baseline start none → 2021-01-28; baseline finish none → 2021-03-31 |
| 2 | Etude préalable |  |  |  | 0% → 100% |  | baseline start none → 2021-01-28; baseline finish none → 2021-02-01 |
| 3 | **Sous-projet "placement"** |  | 2021-03-08 → 2021-03-12 (+4d) | 25d → 29.12d | 0% → 48% |  | baseline start none → 2021-02-01; baseline finish none → 2021-03-08 |
| 4 | EP |  |  |  | 0% → 100% |  | baseline start none → 2021-02-01; baseline finish none → 2021-02-03 |
| 5 | Conception ED "enfant" (ED) |  |  |  | 0% → 100% |  | baseline start none → 2021-02-04; baseline finish none → 2021-02-17 |
| 6 | 1-Fichier "enfant" (prog) |  | 2021-02-22 → 2021-02-18 (-4d) | 3d → 1d | 0% → 100% |  | was named Fichier "enfant" (prog); baseline start none → 1970-01-01; baseline finish none → 1970-01-01 |
| 8 | Affectation enfants-familles (prog) | 2021-02-23 → 2021-03-02 (+7d) | 2021-03-01 → 2021-03-10 (+9d) | 5d → 6.25d |  | 5 → 7 | resources Analyste programmeur → Analtyste programmeur 2 [80%]; baseline start none → 2021-02-23; baseline finish none → 2021-03-01 |
| 9 | MAJ BD (départ enfants) (prog) |  | 2021-03-04 → 2021-03-08 (+4d) | 3d → 3.75d |  | 5 → 7 | resources Analyste programmeur → Analyste programmeur [80%]; baseline start none → 2021-03-02; baseline finish none → 2021-03-04 |
| 10 | Test placement | 2021-03-05 → 2021-03-10 (+5d) | 2021-03-08 → 2021-03-12 (+4d) | 1.5d → 1.88d |  | 6, 8, 9 → 7, 8, 9 | constraint none → start no earlier than 2021-03-08; resources Utilisateur averti → Utilisateur averti [80%]; baseline start none → 2021-03-05; baseline finish none → 2021-03-08 |
| 11 | **Sous-projet "suivi"** |  | 2021-03-15 → 2021-03-26 (+11d) | 30.25d → 38.88d | 0% → 42% |  | baseline start none → 2021-02-01; baseline finish none → 2021-03-15 |
| 12 | Gestion d'historique "enfant" (ED et prog) | 2021-03-11 → 2021-03-17 (+6d) | 2021-03-15 → 2021-03-26 (+11d) | 2.75d → 6.88d |  |  | constraint start no earlier than 2021-03-11 → start no earlier than 2021-03-17; resources Spécialiste système; Analyste programmeur → Spécialiste système [80%]; baseline start none → 2021-03-11; baseline finish none → 2021-03-15 |
| 13 | Planning des visites (ED et prog) |  |  |  | 0% → 100% |  | resources Spécialiste système; Analyste programmeur → Analyste programmeur; Spécialiste système; baseline start none → 2021-02-01; baseline finish none → 2021-02-03 |
| 14 | **Sous-projet "familles d'accueil"** |  |  | 32d → 32.38d | 0% → 13% |  | baseline start none → 2021-02-04; baseline finish none → 2021-03-22 |
| 15 | EP |  |  |  | 0% → 100% |  | baseline start none → 2021-02-04; baseline finish none → 2021-02-08 |
| 18 | Fichier "famille" (prog) | 2021-03-04 → 2021-03-05 (+1d) | 2021-03-11 → 2021-03-12 (+1d) |  |  | Conception BD "famille" (ED) → 17 | constraint start no earlier than 2021-03-02 → start no earlier than 2021-03-05; baseline start none → 2021-03-04; baseline finish none → 2021-03-11 |
| 19 | MAJ BD recrutement, renouvellement (prog) | 2021-03-12 → 2021-03-09 (-3d) | 2021-03-18 → 2021-03-17 (-1d) | 5d → 6.25d |  | Conception BD "famille" (ED) → 17 | constraint start no earlier than 2021-03-12 → start no earlier than 2021-03-09; resources Chef de projet → Analyste programmeur [80%]; baseline start none → 2021-03-12; baseline finish none → 2021-03-18 |
| 20 | Test famille |  |  | 1.5d → 1.88d |  |  | resources Utilisateur averti → Utilisateur averti [80%]; baseline start none → 2021-03-19; baseline finish none → 2021-03-22 |
| 21 | **Sous-projet "allocation"** | 2021-03-04 → 2021-03-08 (+4d) |  | 15.38d → 13.75d |  |  | constraint start no earlier than 2021-02-08 → start no earlier than 2021-03-06; baseline start none → 2021-03-04; baseline finish none → 2021-03-25 |
| 22 | Conception BD compta (ED) | 2021-03-04 → 2021-03-08 (+4d) | 2021-03-10 → 2021-03-16 (+6d) | 5d → 6.25d |  |  | constraint start no earlier than 2021-03-04 → start no earlier than 2021-03-05; resources Spécialiste système → Spécialiste système [80%]; baseline start none → 2021-03-04; baseline finish none → 2021-03-10 |
| 23 | Procédure de versement (prog) | 2021-03-16 → 2021-03-17 (+1d) | 2021-03-18 → 2021-03-22 (+4d) | 3d → 3.75d |  |  | constraint start no earlier than 2021-03-16 → start no earlier than 2021-03-17; resources Analyste programmeur → Analtyste programmeur 2 [80%]; baseline start none → 2021-03-16; baseline finish none → 2021-03-18 |
| 24 | Procédures arrêt (prog) | 2021-03-19 → 2021-03-18 (-1d) |  | 2.5d → 3.12d |  |  | constraint start no earlier than 2021-03-19 → start no earlier than 2021-03-18; resources Analyste programmeur → Analyste programmeur [80%]; baseline start none → 2021-03-19; baseline finish none → 2021-03-23 |
| 25 | Test allocations |  |  | 1.5d → 1.88d |  |  | resources Utilisateur averti → Utilisateur averti [80%]; baseline start none → 2021-03-23; baseline finish none → 2021-03-25 |
| 26 | Intégration | 2021-03-25 → 2021-03-26 (+1d) | 2021-03-31 → 2021-04-01 (+1d) |  |  |  | constraint start no earlier than 2021-03-25 → start no earlier than 2021-03-26; resources Chef de projet; Utilisateur averti; Analyste programmeur; Spécialiste système → Analyste programmeur [80%]; Chef de projet; Spécialiste système [80%]; Utilisateur averti [80%]; Analtyste programmeur 2 [80%]; baseline start none → 2021-03-25; baseline finish none → 2021-03-31 |

## Version 5 (saved 2021-02-18, file maisondeducation.pod)

Note of the change: suite tp4

Last finish stays 2021-04-01.

Changed:

| ID | Task | Other |
| --- | --- | --- |
| 8 | Affectation enfants-familles (prog) | resources Analtyste programmeur 2 [80%] → Analyste programmeur 2 [80%] |
| 23 | Procédure de versement (prog) | resources Analtyste programmeur 2 [80%] → Analyste programmeur 2 [80%] |
| 26 | Intégration | resources Analyste programmeur [80%]; Chef de projet; Spécialiste système [80%]; Utilisateur averti [80%]; Analtyste programmeur 2 [80%] → Analyste programmeur [80%]; Chef de projet; Spécialiste système [80%]; Utilisateur averti [80%]; Analyste programmeur 2 [80%] |

## Version 6 (saved 2021-02-18, file Maison_deducation_prof.pod)

Note of the change: suite tp4

Last finish 2021-04-01 → 2021-03-24 (-8d). Complete tasks 7 → 0.

Added:

| ID | Task | Duration | Start | Finish | Predecessors | Resources |
| --- | --- | --- | --- | --- | --- | --- |
| 15 | Conception BD "famille" (ED) | 10d | 2021-02-09 | 2021-02-22 | 14 | Chef de projet |

Removed: 7 2-Fichier "enfant" (prog); 16 1-Conception BD "famille" (ED); 17 2-Conception BD "famille" (ED)

Changed:

| ID | Task | Start | Finish | Duration | Complete | Predecessors | Other |
| --- | --- | --- | --- | --- | --- | --- | --- |
| 1 | **Maison d'éducation** |  | 2021-04-01 → 2021-03-24 (-8d) | 45.12d → 39.75d | 24% → 0% |  | baseline start 2021-01-28 → none; baseline finish 2021-03-31 → none |
| 2 | Etude préalable |  |  |  | 100% → 0% |  | baseline start 2021-01-28 → none; baseline finish 2021-02-01 → none |
| 3 | **Sous-projet "placement"** |  | 2021-03-12 → 2021-03-08 (-4d) | 29.12d → 25d | 48% → 0% |  | baseline start 2021-02-01 → none; baseline finish 2021-03-08 → none |
| 4 | EP |  |  |  | 100% → 0% |  | baseline start 2021-02-01 → none; baseline finish 2021-02-03 → none |
| 5 | Conception ED "enfant" (ED) |  |  |  | 100% → 0% |  | baseline start 2021-02-04 → none; baseline finish 2021-02-17 → none |
| 6 | Fichier "enfant" (prog) |  | 2021-02-18 → 2021-02-22 (+4d) | 1d → 3d | 100% → 0% |  | was named 1-Fichier "enfant" (prog); constraint start no earlier than 2021-02-18 → none; baseline start 1970-01-01 → none; baseline finish 1970-01-01 → none |
| 7 | Affectation enfants-familles (prog) | 2021-03-02 → 2021-02-23 (-7d) | 2021-03-10 → 2021-03-01 (-9d) | 6.25d → 5d |  | 2-Fichier "enfant" (prog) → 5 | resources Analyste programmeur 2 [80%] → Analyste programmeur; baseline start 2021-02-23 → none; baseline finish 2021-03-01 → none |
| 8 | MAJ BD (départ enfants) (prog) |  | 2021-03-08 → 2021-03-04 (-4d) | 3.75d → 3d |  | 2-Fichier "enfant" (prog) → 5 | resources Analyste programmeur [80%] → Analyste programmeur; baseline start 2021-03-02 → none; baseline finish 2021-03-04 → none |
| 9 | Test placement | 2021-03-10 → 2021-03-05 (-5d) | 2021-03-12 → 2021-03-08 (-4d) | 1.88d → 1.5d |  | 2-Fichier "enfant" (prog), 7, 8 → 6, 7, 8 | constraint start no earlier than 2021-03-08 → none; resources Utilisateur averti [80%] → Utilisateur averti; baseline start 2021-03-05 → none; baseline finish 2021-03-08 → none |
| 10 | **Sous-projet "suivi"** |  | 2021-03-26 → 2021-03-09 (-17d) | 38.88d → 26.25d | 42% → 0% |  | baseline start 2021-02-01 → none; baseline finish 2021-03-15 → none |
| 11 | Gestion d'historique "enfant" (ED et prog) | 2021-03-17 → 2021-03-05 (-12d) | 2021-03-26 → 2021-03-09 (-17d) | 6.88d → 2.75d |  |  | constraint start no earlier than 2021-03-17 → start no earlier than 2021-03-05; resources Spécialiste système [80%] → Spécialiste système; Analyste programmeur; baseline start 2021-03-11 → none; baseline finish 2021-03-15 → none |
| 12 | Planning des visites (ED et prog) |  |  |  | 100% → 0% |  | resources Analyste programmeur; Spécialiste système → Spécialiste système; Analyste programmeur; baseline start 2021-02-01 → none; baseline finish 2021-02-03 → none |
| 13 | **Sous-projet "familles d'accueil"** |  | 2021-03-22 → 2021-03-11 (-11d) | 32.38d → 25d | 13% → 0% |  | baseline start 2021-02-04 → none; baseline finish 2021-03-22 → none |
| 14 | EP |  |  |  | 100% → 0% |  | baseline start 2021-02-04 → none; baseline finish 2021-02-08 → none |
| 16 | Fichier "famille" (prog) | 2021-03-05 → 2021-02-23 (-10d) | 2021-03-12 → 2021-03-02 (-10d) |  |  | 2-Conception BD "famille" (ED) → 15 | constraint start no earlier than 2021-03-05 → none; baseline start 2021-03-04 → none; baseline finish 2021-03-11 → none |
| 17 | MAJ BD recrutement, renouvellement (prog) | 2021-03-09 → 2021-03-03 (-6d) | 2021-03-17 → 2021-03-09 (-8d) | 6.25d → 5d |  | 2-Conception BD "famille" (ED) → 15 | constraint start no earlier than 2021-03-09 → start no earlier than 2021-03-03; resources Analyste programmeur [80%] → Chef de projet; baseline start 2021-03-12 → none; baseline finish 2021-03-18 → none |
| 18 | Test famille | 2021-03-19 → 2021-03-10 (-9d) | 2021-03-22 → 2021-03-11 (-11d) | 1.88d → 1.5d |  |  | constraint start no earlier than 2021-03-19 → none; resources Utilisateur averti [80%] → Utilisateur averti; baseline start 2021-03-19 → none; baseline finish 2021-03-22 → none |
| 19 | **Sous-projet "allocation"** | 2021-03-08 → 2021-02-18 (-18d) | 2021-03-25 → 2021-03-18 (-7d) | 13.75d → 21d |  |  | constraint start no earlier than 2021-03-06 → start no earlier than 2021-02-08; baseline start 2021-03-04 → none; baseline finish 2021-03-25 → none |
| 20 | Conception BD compta (ED) | 2021-03-08 → 2021-02-18 (-18d) | 2021-03-16 → 2021-02-24 (-20d) | 6.25d → 5d |  |  | constraint start no earlier than 2021-03-05 → start no earlier than 2021-02-18; resources Spécialiste système [80%] → Spécialiste système; baseline start 2021-03-04 → none; baseline finish 2021-03-10 → none |
| 21 | Procédure de versement (prog) | 2021-03-17 → 2021-03-10 (-7d) | 2021-03-22 → 2021-03-12 (-10d) | 3.75d → 3d |  |  | constraint start no earlier than 2021-03-17 → start no earlier than 2021-03-10; resources Analyste programmeur 2 [80%] → Analyste programmeur; baseline start 2021-03-16 → none; baseline finish 2021-03-18 → none |
| 22 | Procédures arrêt (prog) | 2021-03-18 → 2021-03-15 (-3d) | 2021-03-23 → 2021-03-17 (-6d) | 3.12d → 2.5d |  |  | constraint start no earlier than 2021-03-18 → start no earlier than 2021-03-15; resources Analyste programmeur [80%] → Analyste programmeur; baseline start 2021-03-19 → none; baseline finish 2021-03-23 → none |
| 23 | Test allocations | 2021-03-23 → 2021-03-17 (-6d) | 2021-03-25 → 2021-03-18 (-7d) | 1.88d → 1.5d |  |  | constraint start no earlier than 2021-03-23 → none; resources Utilisateur averti [80%] → Utilisateur averti; baseline start 2021-03-23 → none; baseline finish 2021-03-25 → none |
| 24 | Intégration | 2021-03-26 → 2021-03-19 (-7d) | 2021-04-01 → 2021-03-24 (-8d) |  |  |  | constraint start no earlier than 2021-03-26 → none; resources Analyste programmeur [80%]; Chef de projet; Spécialiste système [80%]; Utilisateur averti [80%]; Analyste programmeur 2 [80%] → Chef de projet; Utilisateur averti; Analyste programmeur; Spécialiste système; baseline start 2021-03-25 → none; baseline finish 2021-03-31 → none |

## Version 7 (saved 2021-02-18, file Maison_deducation_opti_c4.pod)

Note of the change: suite tp4

Last finish 2021-03-24 → 2021-04-01 (+8d). Complete tasks 0 → 7.

Added:

| ID | Task | Duration | Start | Finish | Predecessors | Constraint | Resources |
| --- | --- | --- | --- | --- | --- | --- | --- |
| 7 | 2-Fichier "enfant" (prog) | 2.5d | 2021-02-26 | 2021-03-02 | 6 | start no earlier than 2021-02-26 | Analyste programmeur [80%] |
| 16 | 1-Conception BD "famille" (ED) | 1d | 2021-02-18 | 2021-02-18 | 15 | start no earlier than 2021-02-18 | Spécialiste système |
| 17 | 2-Conception BD "famille" (ED) | 5d | 2021-02-26 | 2021-03-04 | 16 | start no earlier than 2021-02-26 | Spécialiste système [80%]; Chef de projet |

Removed: 15 Conception BD "famille" (ED)

Changed:

| ID | Task | Start | Finish | Duration | Complete | Predecessors | Other |
| --- | --- | --- | --- | --- | --- | --- | --- |
| 1 | **Maison d'éducation** |  | 2021-03-24 → 2021-04-01 (+8d) | 39.75d → 45.75d | 0% → 23% |  | baseline start none → 2021-01-28; baseline finish none → 2021-03-31 |
| 2 | Etude préalable |  |  |  | 0% → 100% |  | baseline start none → 2021-01-28; baseline finish none → 2021-02-01 |
| 3 | **Sous-projet "placement"** |  | 2021-03-08 → 2021-03-12 (+4d) | 25d → 29.12d | 0% → 48% |  | baseline start none → 2021-02-01; baseline finish none → 2021-03-08 |
| 4 | EP |  |  |  | 0% → 100% |  | baseline start none → 2021-02-01; baseline finish none → 2021-02-03 |
| 5 | Conception ED "enfant" (ED) |  |  |  | 0% → 100% |  | baseline start none → 2021-02-04; baseline finish none → 2021-02-17 |
| 6 | 1-Fichier "enfant" (prog) |  | 2021-02-22 → 2021-02-18 (-4d) | 3d → 1d | 0% → 100% |  | was named Fichier "enfant" (prog); constraint none → start no earlier than 2021-02-18; baseline start none → 1970-01-01; baseline finish none → 1970-01-01 |
| 8 | Affectation enfants-familles (prog) | 2021-02-23 → 2021-03-02 (+7d) | 2021-03-01 → 2021-03-10 (+9d) | 5d → 6.25d |  | 5 → 7 | resources Analyste programmeur → Analtyste programmeur 2 [80%]; baseline start none → 2021-02-23; baseline finish none → 2021-03-01 |
| 9 | MAJ BD (départ enfants) (prog) |  | 2021-03-04 → 2021-03-08 (+4d) | 3d → 3.75d |  | 5 → 7 | resources Analyste programmeur → Analyste programmeur [80%]; baseline start none → 2021-03-02; baseline finish none → 2021-03-04 |
| 10 | Test placement | 2021-03-05 → 2021-03-10 (+5d) | 2021-03-08 → 2021-03-12 (+4d) | 1.5d → 1.88d |  | 6, 8, 9 → 7, 8, 9 | constraint none → start no earlier than 2021-03-08; resources Utilisateur averti → Utilisateur averti [80%]; baseline start none → 2021-03-05; baseline finish none → 2021-03-08 |
| 11 | **Sous-projet "suivi"** |  | 2021-03-09 → 2021-03-26 (+17d) | 26.25d → 38.88d | 0% → 42% |  | baseline start none → 2021-02-01; baseline finish none → 2021-03-15 |
| 12 | Gestion d'historique "enfant" (ED et prog) | 2021-03-05 → 2021-03-17 (+12d) | 2021-03-09 → 2021-03-26 (+17d) | 2.75d → 6.88d |  |  | constraint start no earlier than 2021-03-05 → start no earlier than 2021-03-17; resources Spécialiste système; Analyste programmeur → Spécialiste système [80%]; baseline start none → 2021-03-11; baseline finish none → 2021-03-15 |
| 13 | Planning des visites (ED et prog) |  |  |  | 0% → 100% |  | resources Spécialiste système; Analyste programmeur → Analyste programmeur; Spécialiste système; baseline start none → 2021-02-01; baseline finish none → 2021-02-03 |
| 14 | **Sous-projet "familles d'accueil"** |  | 2021-03-11 → 2021-03-22 (+11d) | 25d → 32.38d | 0% → 12% |  | baseline start none → 2021-02-04; baseline finish none → 2021-03-22 |
| 15 | EP |  |  |  | 0% → 100% |  | baseline start none → 2021-02-04; baseline finish none → 2021-02-08 |
| 18 | Fichier "famille" (prog) | 2021-02-23 → 2021-03-05 (+10d) | 2021-03-02 → 2021-03-12 (+10d) |  |  | Conception BD "famille" (ED) → 17 | constraint none → start no earlier than 2021-03-05; baseline start none → 2021-03-04; baseline finish none → 2021-03-11 |
| 19 | MAJ BD recrutement, renouvellement (prog) | 2021-03-03 → 2021-03-05 (+2d) | 2021-03-09 → 2021-03-16 (+7d) | 5d → 7.81d |  | Conception BD "famille" (ED) → 17 | constraint start no earlier than 2021-03-03 → start no earlier than 2021-03-05; resources Chef de projet → Analyste programmeur [80%]; baseline start none → 2021-03-12; baseline finish none → 2021-03-18 |
| 20 | Test famille | 2021-03-10 → 2021-03-19 (+9d) | 2021-03-11 → 2021-03-22 (+11d) | 1.5d → 1.88d |  |  | constraint none → start no earlier than 2021-03-19; resources Utilisateur averti → Utilisateur averti [80%]; baseline start none → 2021-03-19; baseline finish none → 2021-03-22 |
| 21 | **Sous-projet "allocation"** | 2021-02-18 → 2021-03-08 (+18d) | 2021-03-18 → 2021-03-26 (+8d) | 21d → 15d |  |  | constraint start no earlier than 2021-02-08 → start no earlier than 2021-03-06; baseline start none → 2021-03-04; baseline finish none → 2021-03-25 |
| 22 | Conception BD compta (ED) | 2021-02-18 → 2021-03-08 (+18d) | 2021-02-24 → 2021-03-16 (+20d) | 5d → 6.25d |  |  | constraint start no earlier than 2021-02-18 → start no earlier than 2021-03-05; resources Spécialiste système → Spécialiste système [80%]; baseline start none → 2021-03-04; baseline finish none → 2021-03-10 |
| 23 | Procédure de versement (prog) | 2021-03-10 → 2021-03-17 (+7d) | 2021-03-12 → 2021-03-22 (+10d) | 3d → 3.75d |  |  | constraint start no earlier than 2021-03-10 → start no earlier than 2021-03-17; resources Analyste programmeur → Analyste programmeur [80%]; baseline start none → 2021-03-16; baseline finish none → 2021-03-18 |
| 24 | Procédures arrêt (prog) | 2021-03-15 → 2021-03-20 (+5d) | 2021-03-17 → 2021-03-25 (+8d) | 2.5d → 3.12d |  |  | constraint start no earlier than 2021-03-15 → start no earlier than 2021-03-20; resources Analyste programmeur → Analyste programmeur [80%]; baseline start none → 2021-03-19; baseline finish none → 2021-03-23 |
| 25 | Test allocations | 2021-03-17 → 2021-03-25 (+8d) | 2021-03-18 → 2021-03-26 (+8d) | 1.5d → 1.88d |  |  | constraint none → start no earlier than 2021-03-23; resources Utilisateur averti → Utilisateur averti [80%]; baseline start none → 2021-03-23; baseline finish none → 2021-03-25 |
| 26 | Intégration | 2021-03-19 → 2021-03-29 (+10d) | 2021-03-24 → 2021-04-01 (+8d) |  |  |  | constraint none → start no earlier than 2021-03-26; resources Chef de projet; Utilisateur averti; Analyste programmeur; Spécialiste système → Analyste programmeur [80%]; Chef de projet; Spécialiste système [80%]; Utilisateur averti [80%]; Analtyste programmeur 2 [80%]; baseline start none → 2021-03-25; baseline finish none → 2021-03-31 |

## Version 8 (saved 2021-02-18, file Maison_deducation_opti_c2.pod)

Note of the change: suite tp4

Last finish 2021-04-01 → 2021-04-20 (+19d).

Changed:

| ID | Task | Start | Finish | Duration | Complete | Other |
| --- | --- | --- | --- | --- | --- | --- |
| 1 | **Maison d'éducation** |  | 2021-04-01 → 2021-04-20 (+19d) | 45.75d → 58.94d | 23% → 24% |  |
| 3 | **Sous-projet "placement"** |  | 2021-03-12 → 2021-03-18 (+6d) | 29.12d → 33.12d |  |  |
| 8 | Affectation enfants-familles (prog) |  |  |  |  | resources Analtyste programmeur 2 [80%] → Analyste programmeur [80%] |
| 9 | MAJ BD (départ enfants) (prog) | 2021-03-02 → 2021-03-11 (+9d) | 2021-03-08 → 2021-03-16 (+8d) |  |  | constraint start no earlier than 2021-03-02 → start no earlier than 2021-03-11 |
| 10 | Test placement | 2021-03-10 → 2021-03-16 (+6d) | 2021-03-12 → 2021-03-18 (+6d) |  |  | constraint start no earlier than 2021-03-08 → none |
| 11 | **Sous-projet "suivi"** |  | 2021-03-26 → 2021-03-31 (+5d) | 38.88d → 41.94d |  |  |
| 12 | Gestion d'historique "enfant" (ED et prog) | 2021-03-17 → 2021-03-26 (+9d) | 2021-03-26 → 2021-03-31 (+5d) | 6.88d → 3.44d |  | constraint start no earlier than 2021-03-17 → start no earlier than 2021-03-26; resources Spécialiste système [80%] → Analyste programmeur [80%]; Spécialiste système [80%] |
| 14 | **Sous-projet "familles d'accueil"** |  | 2021-03-22 → 2021-04-02 (+11d) | 32.38d → 41.38d | 12% → 13% |  |
| 17 | 2-Conception BD "famille" (ED) |  | 2021-03-04 → 2021-03-15 (+11d) | 5d → 11.25d |  | resources Spécialiste système [80%]; Chef de projet → Spécialiste système [80%] |
| 18 | Fichier "famille" (prog) | 2021-03-05 → 2021-03-15 (+10d) | 2021-03-12 → 2021-03-23 (+11d) |  |  | constraint start no earlier than 2021-03-05 → start no earlier than 2021-03-02 |
| 19 | MAJ BD recrutement, renouvellement (prog) | 2021-03-05 → 2021-03-25 (+20d) | 2021-03-16 → 2021-03-31 (+15d) | 7.81d → 5d |  | constraint start no earlier than 2021-03-05 → start no earlier than 2021-03-25; resources Analyste programmeur [80%] → Chef de projet |
| 20 | Test famille | 2021-03-19 → 2021-04-01 (+13d) | 2021-03-22 → 2021-04-02 (+11d) |  |  |  |
| 21 | **Sous-projet "allocation"** | 2021-03-08 → 2021-03-17 (+9d) | 2021-03-26 → 2021-04-14 (+19d) | 15d → 20.25d |  | constraint start no earlier than 2021-03-06 → start no earlier than 2021-03-04 |
| 22 | Conception BD compta (ED) | 2021-03-08 → 2021-03-17 (+9d) | 2021-03-16 → 2021-03-25 (+9d) |  |  | constraint start no earlier than 2021-03-05 → start no earlier than 2021-03-17 |
| 23 | Procédure de versement (prog) | 2021-03-17 → 2021-04-01 (+15d) | 2021-03-22 → 2021-04-06 (+15d) |  |  | constraint start no earlier than 2021-03-17 → start no earlier than 2021-04-01 |
| 24 | Procédures arrêt (prog) | 2021-03-20 → 2021-04-07 (+18d) | 2021-03-25 → 2021-04-12 (+18d) |  |  | constraint start no earlier than 2021-03-20 → start no earlier than 2021-04-07 |
| 25 | Test allocations | 2021-03-25 → 2021-04-12 (+18d) | 2021-03-26 → 2021-04-14 (+19d) |  |  |  |
| 26 | Intégration | 2021-03-29 → 2021-04-14 (+16d) | 2021-04-01 → 2021-04-20 (+19d) | 3.75d → 4.69d |  | constraint start no earlier than 2021-03-26 → start no earlier than 2021-04-01; resources Analyste programmeur [80%]; Chef de projet; Spécialiste système [80%]; Utilisateur averti [80%]; Analtyste programmeur 2 [80%] → Analyste programmeur [80%]; Chef de projet; Spécialiste système [80%]; Utilisateur averti [80%] |

## Version 9 (saved 2021-02-18, file Maison_deducation_opti_finale.pod)

Note of the change: suite tp4

Last finish 2021-04-20 → 2021-03-31 (-20d).

Added:

| ID | Task | Duration | Start | Finish | Predecessors | Constraint | Resources |
| --- | --- | --- | --- | --- | --- | --- | --- |
| 15 | Conception BD "famille" (ED) | 4d | 2021-02-18 | 2021-02-23 | 14 | start no earlier than 2021-02-18 | Spécialiste système |

Removed: 7 2-Fichier "enfant" (prog); 17 2-Conception BD "famille" (ED)

Changed:

| ID | Task | Start | Finish | Duration | Complete | Predecessors | Other |
| --- | --- | --- | --- | --- | --- | --- | --- |
| 1 | **Maison d'éducation** |  | 2021-04-20 → 2021-03-31 (-20d) | 58.94d → 44.12d | 24% → 30% |  | baseline start 2021-01-28 → none; baseline finish 2021-03-31 → none |
| 2 | Etude préalable |  |  |  |  |  | baseline start 2021-01-28 → none; baseline finish 2021-02-01 → none |
| 3 | **Sous-projet "placement"** |  | 2021-03-18 → 2021-03-08 (-10d) | 33.12d → 25d | 48% → 62% |  | baseline start 2021-02-01 → none; baseline finish 2021-03-08 → none |
| 4 | EP |  |  |  |  |  | baseline start 2021-02-01 → none; baseline finish 2021-02-03 → none |
| 5 | Conception ED "enfant" (ED) |  |  |  |  |  | baseline start 2021-02-04 → none; baseline finish 2021-02-17 → none |
| 6 | Fichier "enfant" (prog) |  | 2021-02-18 → 2021-02-22 (+4d) | 1d → 3d |  |  | was named 1-Fichier "enfant" (prog); baseline start 1970-01-01 → none; baseline finish 1970-01-01 → none |
| 7 | Affectation enfants-familles (prog) | 2021-03-02 → 2021-02-23 (-7d) | 2021-03-10 → 2021-03-01 (-9d) | 6.25d → 5d |  | 2-Fichier "enfant" (prog) → 5 | resources Analyste programmeur [80%] → malgache 2; baseline start 2021-02-23 → none; baseline finish 2021-03-01 → none |
| 8 | MAJ BD (départ enfants) (prog) | 2021-03-11 → 2021-03-02 (-9d) | 2021-03-16 → 2021-03-04 (-12d) | 3.75d → 3d |  | 2-Fichier "enfant" (prog) → 5 | constraint start no earlier than 2021-03-11 → start no earlier than 2021-03-02; resources Analyste programmeur [80%] → malgache 2; baseline start 2021-03-02 → none; baseline finish 2021-03-04 → none |
| 9 | Test placement | 2021-03-16 → 2021-03-05 (-11d) | 2021-03-18 → 2021-03-08 (-10d) | 1.88d → 1.5d |  | 2-Fichier "enfant" (prog), 7, 8 → 6, 7, 8 | resources Utilisateur averti [80%] → Utilisateur averti; baseline start 2021-03-05 → none; baseline finish 2021-03-08 → none |
| 10 | **Sous-projet "suivi"** |  | 2021-03-31 → 2021-03-15 (-16d) | 41.94d → 30.25d | 42% → 48% |  | baseline start 2021-02-01 → none; baseline finish 2021-03-15 → none |
| 11 | Gestion d'historique "enfant" (ED et prog) | 2021-03-26 → 2021-03-11 (-15d) | 2021-03-31 → 2021-03-15 (-16d) | 3.44d → 2.75d |  |  | constraint start no earlier than 2021-03-26 → start no earlier than 2021-03-11; resources Analyste programmeur [80%]; Spécialiste système [80%] → malagache 1; malgache 2; baseline start 2021-03-11 → none; baseline finish 2021-03-15 → none |
| 12 | Planning des visites (ED et prog) |  |  |  |  |  | resources Analyste programmeur; Spécialiste système → Spécialiste système; Analyste programmeur; baseline start 2021-02-01 → none; baseline finish 2021-02-03 → none |
| 13 | **Sous-projet "familles d'accueil"** |  | 2021-04-02 → 2021-03-22 (-11d) | 41.38d → 32d | 13% → 26% |  | baseline start 2021-02-04 → none; baseline finish 2021-03-22 → none |
| 14 | EP |  |  |  |  |  | baseline start 2021-02-04 → none; baseline finish 2021-02-08 → none |
| 16 | Conception BD "famille" (ED) | 2021-02-18 → 2021-02-24 (+6d) | 2021-02-18 → 2021-03-03 (+13d) | 1d → 6d | 100% → 0% | 14 → 15 | was named 1-Conception BD "famille" (ED); resources Spécialiste système → malagache 1; baseline start 1970-01-01 → none; baseline finish 1970-01-01 → none |
| 17 | Fichier "famille" (prog) | 2021-03-15 → 2021-03-04 (-11d) | 2021-03-23 → 2021-03-11 (-12d) |  |  | 2-Conception BD "famille" (ED) → 16 | baseline start 2021-03-04 → none; baseline finish 2021-03-11 → none |
| 18 | MAJ BD recrutement, renouvellement (prog) | 2021-03-25 → 2021-03-12 (-13d) | 2021-03-31 → 2021-03-18 (-13d) |  |  | 2-Conception BD "famille" (ED) → 16 | constraint start no earlier than 2021-03-25 → start no earlier than 2021-03-12; baseline start 2021-03-12 → none; baseline finish 2021-03-18 → none |
| 19 | Test famille | 2021-04-01 → 2021-03-19 (-13d) | 2021-04-02 → 2021-03-22 (-11d) | 1.88d → 1.5d |  |  | resources Utilisateur averti [80%] → Utilisateur averti; baseline start 2021-03-19 → none; baseline finish 2021-03-22 → none |
| 20 | **Sous-projet "allocation"** | 2021-03-17 → 2021-03-04 (-13d) | 2021-04-14 → 2021-03-25 (-20d) | 20.25d → 15.38d |  |  | constraint start no earlier than 2021-03-04 → start no earlier than 2021-02-08; baseline start 2021-03-04 → none; baseline finish 2021-03-25 → none |
| 21 | Conception BD compta (ED) | 2021-03-17 → 2021-03-04 (-13d) | 2021-03-25 → 2021-03-10 (-15d) | 6.25d → 5d |  |  | constraint start no earlier than 2021-03-17 → start no earlier than 2021-03-04; resources Spécialiste système [80%] → malagache 1; baseline start 2021-03-04 → none; baseline finish 2021-03-10 → none |
| 22 | Procédure de versement (prog) | 2021-04-01 → 2021-03-16 (-16d) | 2021-04-06 → 2021-03-18 (-19d) | 3.75d → 3d |  |  | constraint start no earlier than 2021-04-01 → start no earlier than 2021-03-16; resources Analyste programmeur [80%] → malagache 1; baseline start 2021-03-16 → none; baseline finish 2021-03-18 → none |
| 23 | Procédures arrêt (prog) | 2021-04-07 → 2021-03-19 (-19d) | 2021-04-12 → 2021-03-23 (-20d) | 3.12d → 2.5d |  |  | constraint start no earlier than 2021-04-07 → start no earlier than 2021-03-19; resources Analyste programmeur [80%] → malagache 1; baseline start 2021-03-19 → none; baseline finish 2021-03-23 → none |
| 24 | Test allocations | 2021-04-12 → 2021-03-23 (-20d) | 2021-04-14 → 2021-03-25 (-20d) | 1.88d → 1.5d |  |  | resources Utilisateur averti [80%] → Utilisateur averti; baseline start 2021-03-23 → none; baseline finish 2021-03-25 → none |
| 25 | Intégration | 2021-04-14 → 2021-03-25 (-20d) | 2021-04-20 → 2021-03-31 (-20d) | 4.69d → 3.75d |  |  | constraint start no earlier than 2021-04-01 → start no earlier than 2021-03-25; resources Analyste programmeur [80%]; Chef de projet; Spécialiste système [80%]; Utilisateur averti [80%] → Chef de projet; Utilisateur averti; malagache 1; billet; hotel [700%]; malgache 2; baseline start 2021-03-25 → none; baseline finish 2021-03-31 → none |

## Version 10 (saved 2021-02-18, file Maison_deducation_opti_c5.pod)

Note of the change: suite tp4

Last finish 2021-03-31 → 2021-04-01 (+1d).

Added:

| ID | Task | Duration | Start | Finish | Predecessors | Constraint | Resources |
| --- | --- | --- | --- | --- | --- | --- | --- |
| 7 | 2-Fichier "enfant" (prog) | 2.5d | 2021-02-26 | 2021-03-02 | 6 | start no earlier than 2021-02-26 | Analyste programmeur [80%] |
| 17 | 2-Conception BD "famille" (ED) | 5d | 2021-02-26 | 2021-03-04 | 16 | start no earlier than 2021-02-26 | Spécialiste système [80%]; Chef de projet |

Removed: 15 Conception BD "famille" (ED)

Changed:

| ID | Task | Start | Finish | Duration | Complete | Predecessors | Other |
| --- | --- | --- | --- | --- | --- | --- | --- |
| 1 | **Maison d'éducation** |  | 2021-03-31 → 2021-04-01 (+1d) | 44.12d → 45.75d | 30% → 23% |  | baseline start none → 2021-01-28; baseline finish none → 2021-03-31 |
| 2 | Etude préalable |  |  |  |  |  | baseline start none → 2021-01-28; baseline finish none → 2021-02-01 |
| 3 | **Sous-projet "placement"** |  | 2021-03-08 → 2021-03-12 (+4d) | 25d → 29.12d | 62% → 48% |  | baseline start none → 2021-02-01; baseline finish none → 2021-03-08 |
| 4 | EP |  |  |  |  |  | baseline start none → 2021-02-01; baseline finish none → 2021-02-03 |
| 5 | Conception ED "enfant" (ED) |  |  |  |  |  | baseline start none → 2021-02-04; baseline finish none → 2021-02-17 |
| 6 | 1-Fichier "enfant" (prog) |  | 2021-02-22 → 2021-02-18 (-4d) | 3d → 1d |  |  | was named Fichier "enfant" (prog); baseline start none → 1970-01-01; baseline finish none → 1970-01-01 |
| 8 | Affectation enfants-familles (prog) | 2021-02-23 → 2021-03-02 (+7d) | 2021-03-01 → 2021-03-10 (+9d) | 5d → 6.25d |  | 5 → 7 | resources malgache 2 → Analtyste programmeur 2 [80%]; baseline start none → 2021-02-23; baseline finish none → 2021-03-01 |
| 9 | MAJ BD (départ enfants) (prog) |  | 2021-03-04 → 2021-03-08 (+4d) | 3d → 3.75d |  | 5 → 7 | resources malgache 2 → Analyste programmeur [80%]; baseline start none → 2021-03-02; baseline finish none → 2021-03-04 |
| 10 | Test placement | 2021-03-05 → 2021-03-10 (+5d) | 2021-03-08 → 2021-03-12 (+4d) | 1.5d → 1.88d |  | 6, 8, 9 → 7, 8, 9 | constraint none → start no earlier than 2021-03-08; resources Utilisateur averti → Utilisateur averti [80%]; baseline start none → 2021-03-05; baseline finish none → 2021-03-08 |
| 11 | **Sous-projet "suivi"** |  | 2021-03-15 → 2021-03-26 (+11d) | 30.25d → 38.88d | 48% → 42% |  | baseline start none → 2021-02-01; baseline finish none → 2021-03-15 |
| 12 | Gestion d'historique "enfant" (ED et prog) | 2021-03-11 → 2021-03-17 (+6d) | 2021-03-15 → 2021-03-26 (+11d) | 2.75d → 6.88d |  |  | constraint start no earlier than 2021-03-11 → start no earlier than 2021-03-17; resources malagache 1; malgache 2 → Spécialiste système [80%]; baseline start none → 2021-03-11; baseline finish none → 2021-03-15 |
| 13 | Planning des visites (ED et prog) |  |  |  |  |  | resources Spécialiste système; Analyste programmeur → Analyste programmeur; Spécialiste système; baseline start none → 2021-02-01; baseline finish none → 2021-02-03 |
| 14 | **Sous-projet "familles d'accueil"** |  |  | 32d → 32.38d | 26% → 12% |  | baseline start none → 2021-02-04; baseline finish none → 2021-03-22 |
| 15 | EP |  |  |  |  |  | baseline start none → 2021-02-04; baseline finish none → 2021-02-08 |
| 16 | 1-Conception BD "famille" (ED) | 2021-02-24 → 2021-02-18 (-6d) | 2021-03-03 → 2021-02-18 (-13d) | 6d → 1d | 0% → 100% | Conception BD "famille" (ED) → 15 | was named Conception BD "famille" (ED); resources malagache 1 → Spécialiste système; baseline start none → 1970-01-01; baseline finish none → 1970-01-01 |
| 18 | Fichier "famille" (prog) | 2021-03-04 → 2021-03-05 (+1d) | 2021-03-11 → 2021-03-12 (+1d) |  |  | 16 → 17 | constraint start no earlier than 2021-03-02 → start no earlier than 2021-03-05; baseline start none → 2021-03-04; baseline finish none → 2021-03-11 |
| 19 | MAJ BD recrutement, renouvellement (prog) | 2021-03-12 → 2021-03-06 (-6d) | 2021-03-18 → 2021-03-17 (-1d) | 5d → 7.81d |  | 16 → 17 | constraint start no earlier than 2021-03-12 → start no earlier than 2021-03-06; resources Chef de projet → Analyste programmeur [80%]; baseline start none → 2021-03-12; baseline finish none → 2021-03-18 |
| 20 | Test famille |  |  | 1.5d → 1.88d |  |  | resources Utilisateur averti → Utilisateur averti [80%]; baseline start none → 2021-03-19; baseline finish none → 2021-03-22 |
| 21 | **Sous-projet "allocation"** | 2021-03-04 → 2021-03-08 (+4d) | 2021-03-25 → 2021-03-26 (+1d) | 15.38d → 15d |  |  | constraint start no earlier than 2021-02-08 → start no earlier than 2021-03-06; baseline start none → 2021-03-04; baseline finish none → 2021-03-25 |
| 22 | Conception BD compta (ED) | 2021-03-04 → 2021-03-08 (+4d) | 2021-03-10 → 2021-03-16 (+6d) | 5d → 6.25d |  |  | constraint start no earlier than 2021-03-04 → start no earlier than 2021-03-05; resources malagache 1 → Spécialiste système [80%]; baseline start none → 2021-03-04; baseline finish none → 2021-03-10 |
| 23 | Procédure de versement (prog) | 2021-03-16 → 2021-03-17 (+1d) | 2021-03-18 → 2021-03-23 (+5d) | 3d → 4.69d |  |  | constraint start no earlier than 2021-03-16 → start no earlier than 2021-03-17; resources malagache 1 → Analtyste programmeur 2 [80%]; baseline start none → 2021-03-16; baseline finish none → 2021-03-18 |
| 24 | Procédures arrêt (prog) | 2021-03-19 → 2021-03-20 (+1d) | 2021-03-23 → 2021-03-25 (+2d) | 2.5d → 3.12d |  |  | constraint start no earlier than 2021-03-19 → start no earlier than 2021-03-20; resources malagache 1 → Analyste programmeur [80%]; baseline start none → 2021-03-19; baseline finish none → 2021-03-23 |
| 25 | Test allocations | 2021-03-23 → 2021-03-25 (+2d) | 2021-03-25 → 2021-03-26 (+1d) | 1.5d → 1.88d |  |  | resources Utilisateur averti → Utilisateur averti [80%]; baseline start none → 2021-03-23; baseline finish none → 2021-03-25 |
| 26 | Intégration | 2021-03-25 → 2021-03-29 (+4d) | 2021-03-31 → 2021-04-01 (+1d) |  |  |  | constraint start no earlier than 2021-03-25 → start no earlier than 2021-03-26; resources Chef de projet; Utilisateur averti; malagache 1; billet; hotel [700%]; malgache 2 → Analyste programmeur [80%]; Chef de projet; Spécialiste système [80%]; Utilisateur averti [80%]; Analtyste programmeur 2 [80%]; baseline start none → 2021-03-25; baseline finish none → 2021-03-31 |
